# 2013-09-01-Styringssystem båt

Schedule from MS Project, 2013-09-02 to 2013-11-04, status date 2013-09-16, costs in kr, A marks actual dates.

## Calendars

- Standard: Mon 07:30-12:00; Tue 07:30-14:00; Wed off; Thu 07:30-12:00; Fri-Sun off.

## Resources

| Resource | Rate |
| --- | --- |
| Emil | 157 |
| Relé | 120 |
| Aktive komponenter |  |
| Mikrokontroller | 600 |
| Diverse elektronikk | 100 |
| Fuel flow sensor | 120 |
| GPS sensor | 800 |
| Lys-sensor | 20 |

## Schedule

| ID | WBS | Task | Type | Duration | Start | Finish | Predecessors | Complete | Remaining | Baseline start | Baseline finish | Baseline duration | Total slack | Free slack | Constraint | Resources | Work | Actual work | Cost | Baseline cost | Actual cost |
| --- | --- | --- | --- | --- | --- | --- | --- | --- | --- | --- | --- | --- | --- | --- | --- | --- | --- | --- | --- | --- | --- |
| 1 | 1 | Oppstart | milestone | 0d | 2013-09-02 | 2013-09-02 |  |  |  | 2013-09-02 | 2013-09-02 |  | 17.56d |  |  |  |  |  |  |  |  |
| 2 | 2 | Planlegging |  | 4.5h? | 2013-09-02 A | 2013-09-03 A |  | 100% |  | 2013-09-02 | 2013-09-03 | 4.5h? |  |  |  | Emil | 4.5h | 4.5h | 706.5 | 706.5 | 706.5 |
| 3 | 3 | **Hardware** |  | 15.88d? | 2013-09-03 A | 2013-10-29 |  | 30% | 11.11d? | 2013-09-03 | 2013-10-29 | 15.88d? | 0d |  |  |  | 40.5h | 12.15h | 8,118.5 | 8,118.5 | 1,907.55 |
| 4 | 3.1 | Hardware design |  | 9h? | 2013-09-03 A | 2013-09-05 | 2 | 85% | 1.35h? | 2013-09-03 | 2013-09-05 | 9h? | 0.56d | 0d |  | Emil | 9h | 7.65h | 1,413 | 1,413 | 1,201.05 |
| 5 | 3.2 | Hardware produksjon prototype |  | 9h? | 2013-09-05 A | 2013-09-10 | 4 | 50% | 4.5h? | 2013-09-05 | 2013-09-10 | 9h? | 0d |  |  | Emil | 9h | 4.5h | 1,413 | 1,413 | 706.5 |
| 6 | 3.3 | Hardware prototype test |  | 9h? | 2013-09-10 | 2013-09-12 | 5FS-2h |  |  | 2013-09-10 | 2013-09-12 | 9h? | 0d |  |  | Emil | 9h |  | 1,413 | 1,413 |  |
| 7 | 3.4 | Hardware produkt produksjon |  | 9h? | 2013-10-22 | 2013-10-28 | 13 |  |  | 2013-10-22 | 2013-10-28 | 9h? | 0d |  |  | Aktive komponenter; Diverse elektronikk; Fuel flow sensor; GPS sensor; Lys-sensor; Mikrokontroller; Relé; Emil | 9h |  | 3,173 | 3,173 |  |
| 8 | 3.5 | Hardware produkt test |  | 4.5h? | 2013-10-28 | 2013-10-29 | 7 |  |  | 2013-10-28 | 2013-10-29 | 4.5h? | 0d |  |  | Emil | 4.5h |  | 706.5 | 706.5 |  |
| 9 | 4 | **Software** |  | 11.06d? | 2013-09-12 | 2013-10-22 |  |  |  | 2013-09-12 | 2013-10-22 | 11.06d? | 0d |  |  |  | 94.5h |  | 14,836.5 | 14,836.5 |  |
| 10 | 4.1 | Software design |  | 9h? | 2013-09-12 | 2013-09-17 | 6 |  |  | 2013-09-12 | 2013-09-17 | 9h? | 0d |  |  | Emil | 9h |  | 1,413 | 1,413 |  |
| 11 | 4.2 | Software læring |  | 27h | 2013-09-17 | 2013-09-30 | 10 |  |  | 2013-09-17 | 2013-09-30 | 27h | 0d |  |  | Emil | 27h |  | 4,239 | 4,239 |  |
| 12 | 4.3 | Software produksjon |  | 45h? | 2013-09-30 | 2013-10-21 | 11 |  |  | 2013-09-30 | 2013-10-21 | 45h? | 0d |  |  | Emil | 45h |  | 7,065 | 7,065 |  |
| 13 | 4.4 | Software test |  | 13.5h? | 2013-10-17 | 2013-10-22 | 12FS-6h |  |  | 2013-10-17 | 2013-10-22 | 13.5h? | 0d |  |  | Emil | 13.5h |  | 2,119.5 | 2,119.5 |  |
| 14 | 5 | FAT produkt |  | 9h? | 2013-10-29 | 2013-11-04 | 8 |  |  | 2013-10-29 | 2013-11-04 | 9h? | 0d |  |  | Emil | 9h |  | 1,413 | 1,413 |  |
| 15 | 6 | Ferdig | milestone | 0d | 2013-11-04 | 2013-11-04 | 14 |  |  | 2013-11-04 | 2013-11-04 |  | 0d |  | finish no later than 2013-11-04 |  |  |  |  |  |  |
